# DDL_Project_Schedule_v1.0_EN

How a schedule from MS Project changed from version to version. A marks actual dates.

## Version 1 (saved 2016-01-20)

Note of the change: Project Schedule

| ID | WBS | Task | Duration | Start | Finish | Predecessors | Total float | Constraint |
| --- | --- | --- | --- | --- | --- | --- | --- | --- |
| 1 | 1 | **Outsourcing (OHRM)** | 80d? | 2016-01-08 | 2016-04-28 |  |  |  |
| 2 | 1.1 | **Initiation** | 12d? | 2016-01-08 | 2016-01-25 |  | 0d |  |
| 3 |  | Form up team roles | 0.5d | 2016-01-08 | 2016-01-08 |  | 0d |  |
| 4 |  | Select project idea | 0.5d | 2016-01-08 | 2016-01-08 | 3 | 0d |  |
| 5 | 1.1.3 | **Develop project idea** | 1d | 2016-01-11 | 2016-01-11 | 4 | 0d |  |
| 6 |  | Define project scope | 0.5d | 2016-01-11 | 2016-01-11 |  | 0d |  |
| 7 |  | Define project features | 0.5d | 2016-01-11 | 2016-01-11 | 6 | 0d |  |
| 8 |  | Kick-off meeting | 1d? | 2016-01-12 | 2016-01-12 | 5 | 0d |  |
| 9 | 1.1.5 | **Environment** | 2d? | 2016-01-13 | 2016-01-14 | 8 | 0d |  |
| 10 |  | Create guideline to install and use tools & environments | 0.5d? | 2016-01-13 | 2016-01-13 |  | 0d |  |
| 11 | 1.1.5.2 | **Install tools & environments** | 1d | 2016-01-13 | 2016-01-14 | 10 | 0d |  |
| 12 |  | Install TortoiseGit | 0.5h | 2016-01-13 | 2016-01-13 |  | 0d |  |
| 13 |  | Install Visual Studio 2013 | 3h | 2016-01-13 | 2016-01-13 | 12 | 0d |  |
| 14 |  | Install Microsoft SQL Server 2010 | 2h | 2016-01-13 | 2016-01-14 | 13 | 0d |  |
| 15 |  | Install Microsoft Project 2013 | 2h | 2016-01-14 | 2016-01-14 | 14 | 0d |  |
| 16 |  | Install Sublime Text | 0.5h | 2016-01-14 | 2016-01-14 | 15 | 0d |  |
| 17 |  | Trainning using tools & environments | 0.5d | 2016-01-14 | 2016-01-14 | 11 | 0d |  |
| 18 | 1.1.6 | **Technology Research (Part 1)** | 7d | 2016-01-15 | 2016-01-25 | 9 | 0d |  |
| 19 |  | Study Java & MVC | 7d | 2016-01-15 | 2016-01-25 |  | 0d | start no earlier than 2015-09-14 |
| 20 |  | Study Jquery & Bootstrap | 7d | 2016-01-15 | 2016-01-25 |  | 0d |  |
| 21 |  | Study Bootstraps, HTML5 & CSS3 | 5d | 2016-01-15 | 2016-01-21 |  | 2d |  |
| 22 |  | SRS/PP Review checklist | 0.5d? | 2016-01-13 | 2016-01-13 | 8 | 0d |  |
| 23 | 1.1.8 | **Project Introduction** | 3d | 2016-01-13 | 2016-01-18 | 22 | 2d |  |
| 24 |  | Create Project Introduction | 2d | 2016-01-13 | 2016-01-15 |  | 2d |  |
| 25 |  | Review Project Introduction | 0.5d | 2016-01-15 | 2016-01-15 | 24 | 2d |  |
| 26 |  | Update Project Introduction | 0.5d | 2016-01-18 | 2016-01-18 | 25 | 2d |  |
| 27 |  | Complete Project Introduction | 0d | 2016-01-18 | 2016-01-18 | 26 | 2d |  |
| 28 | 1.1.9 | **Project Plan** | 8d? | 2016-01-13 | 2016-01-25 | 22 | 0d |  |
| 29 |  | Create Project Plan in MS Word | 3d | 2016-01-13 | 2016-01-18 |  | 0d |  |
| 30 |  | Create Project Schedule in .mmp file | 3d | 2016-01-18 | 2016-01-21 | 29 | 0d |  |
| 31 |  | Create CM Plan | 2d | 2016-01-13 | 2016-01-15 |  | 4d |  |
| 32 |  | Review Project Plan, CMPlan, Schedule | 1d | 2016-01-21 | 2016-01-22 | 31, 30 | 0d |  |
| 33 |  | Update Project Plan, CMPlan, Schedule | 1d? | 2016-01-22 | 2016-01-25 | 32 | 0d |  |
| 34 |  | Complete Project Plan | 0d | 2016-01-22 | 2016-01-22 | 32 | 1d |  |
| 35 | 1.1.10 | **User Requirement Specification** | 3d? | 2016-01-18 | 2016-01-21 | 23 | 2d |  |
| 36 |  | Create User Requirement Sepecification | 2d | 2016-01-18 | 2016-01-20 |  | 2d |  |
| 37 |  | Review User Requirement Specification | 0.5d? | 2016-01-20 | 2016-01-20 | 36 | 2d |  |
| 38 |  | Update User Requirement Specification | 0.5d? | 2016-01-21 | 2016-01-21 | 37 | 2d |  |
| 39 |  | Complete User Requirement Specification | 0d | 2016-01-21 | 2016-01-21 | 38 | 2d |  |
| 40 | 1.1.11 | **Q&A Sheet** | 3.5d? | 2016-01-13 | 2016-01-18 | 22 | 4.5d |  |
| 41 |  | Create Q&A sheet | 2d | 2016-01-13 | 2016-01-15 |  | 4.5d |  |
| 42 |  | Review Q&A sheet | 0.5d? | 2016-01-15 | 2016-01-15 | 41 | 4.5d |  |
| 43 |  | Translate Q&A sheet to Japanese | 1d | 2016-01-18 | 2016-01-18 | 42 | 4.5d |  |
| 44 |  | Create progress report 1 | 0.5d | 2016-01-25 | 2016-01-25 | 23, 28, 35, 40 | 0d |  |
| 45 |  | Submit progress report 1 | 0d | 2016-01-25 | 2016-01-25 | 44 | 0d |  |
| 46 | 1.2 | **Solution** | 26d? | 2016-01-26 | 2016-03-01 | 2 | 0d |  |
| 47 | 1.2.1 | **Technology Research (Part 2)** | 3d? | 2016-01-26 | 2016-01-28 |  | 0d |  |
| 48 |  | Code first migration | 2d | 2016-01-26 | 2016-01-27 |  | 2d |  |
| 49 |  | Restful API on .net MVC | 3d | 2016-01-26 | 2016-01-28 |  | 0d |  |
| 50 |  | Payment by BaoKim API | 1d? | 2016-01-26 | 2016-01-26 |  | 0d |  |
| 51 |  | Facebook Login API | 1d? | 2016-01-27 | 2016-01-27 | 50 | 0d |  |
| 52 | 1.2.2 | **Demo & Prototypes** | 9d | 2016-01-26 | 2016-02-05 |  | 17d |  |
| 53 |  | Create Demo | 7d | 2016-01-26 | 2016-02-03 |  | 19d |  |
| 54 |  | Create Prototype | 9d | 2016-01-26 | 2016-02-05 |  | 17d |  |
| 55 | 1.2.3 | **Software Requirement Specification** | 4d | 2016-01-26 | 2016-01-29 |  | 8d |  |
| 56 | 1.2.3.1 | **Non-functional Requirements Specification** | 2d | 2016-01-26 | 2016-01-27 |  | 8d |  |
| 57 |  | Define Security Requirements | 1d | 2016-01-26 | 2016-01-26 |  | 9d |  |
| 58 |  | Define Performane Requirements | 1d | 2016-01-26 | 2016-01-26 |  | 9d |  |
| 59 |  | Define User-interface Requirements | 2d | 2016-01-26 | 2016-01-27 |  | 8d |  |
| 60 | 1.2.3.2 | **Functional Requirements Specification** | 2d | 2016-01-28 | 2016-01-29 | 56 | 8d |  |
| 61 |  | Define User Client Module functional Requirements | 2d | 2016-01-28 | 2016-01-29 |  | 8d |  |
| 62 |  | Define Admin Module functional Requirments | 2d | 2016-01-28 | 2016-01-29 |  | 8d |  |
| 63 | 1.2.4 | **System Design** | 16d? | 2016-01-28 | 2016-02-18 |  | 0d |  |
| 64 |  | Create design review checklist | 1d? | 2016-01-28 | 2016-01-28 | 51 | 0d |  |
| 65 | 1.2.4.2 | **Architectural Design** | 9d? | 2016-01-29 | 2016-02-10 | 64 | 0d |  |
| 66 |  | Define architectural design | 1d | 2016-01-29 | 2016-01-29 | 48 | 1d |  |
| 67 |  | Define system features | 2d | 2016-01-29 | 2016-02-01 | 49 | 0d |  |
| 68 |  | Study and choose suitable architectural design | 2d | 2016-02-02 | 2016-02-03 | 67, 66 | 0d |  |
| 69 |  | Create Architectural design | 3d | 2016-02-04 | 2016-02-08 | 68 | 0d |  |
| 70 |  | Review architectural design | 1d | 2016-02-09 | 2016-02-09 | 69 | 0d |  |

| ID | WBS | Task | Duration | Start | Finish | Predecessors | Total float |
| --- | --- | --- | --- | --- | --- | --- | --- |
| 71 |  | Update Architectural Design | 1d? | 2016-02-10 | 2016-02-10 | 70 | 0d |
| 72 |  | Complete Architectural Design version 1.0 | 0d | 2016-02-09 | 2016-02-09 | 70 | 1d |
| 73 | 1.2.4.3 | **Screen design** | 9d? | 2016-02-01 | 2016-02-11 | 55 | 13d |
| 74 |  | Create screen flow document | 2d | 2016-02-01 | 2016-02-02 |  | 13d |
| 75 |  | Create client screen design | 5d | 2016-02-03 | 2016-02-09 | 74 | 13d |
| 76 |  | Create admin screen design | 5d | 2016-02-03 | 2016-02-09 | 74 | 13d |
| 77 |  | Review screen design | 1d? | 2016-02-10 | 2016-02-10 | 76, 75 | 13d |
| 78 |  | Update screen design | 1d? | 2016-02-11 | 2016-02-11 | 77 | 13d |
| 79 |  | Complete screen design | 0d | 2016-02-11 | 2016-02-11 | 78 | 13d |
| 80 | 1.2.4.4 | **Database design** | 4.5d? | 2016-02-01 | 2016-02-05 | 55 | 17.5d |
| 81 |  | Create database design | 3d | 2016-02-01 | 2016-02-03 |  | 17.5d |
| 82 |  | Review database design | 0.5d? | 2016-02-04 | 2016-02-04 | 81 | 17.5d |
| 83 |  | Update database design | 1d | 2016-02-04 | 2016-02-05 | 82 | 17.5d |
| 84 |  | Complete database design | 0d | 2016-02-05 | 2016-02-05 | 83 | 17.5d |
| 85 | 1.2.4.5 | **Class/Component Design** | 6d? | 2016-02-11 | 2016-02-18 | 65, 55 | 0d |
| 86 |  | Define Class and Component | 1d | 2016-02-11 | 2016-02-11 |  | 0d |
| 87 |  | Create Class/component design | 3d | 2016-02-12 | 2016-02-16 | 86 | 0d |
| 88 |  | Review Class/component design | 1d? | 2016-02-17 | 2016-02-17 | 87 | 0d |
| 89 |  | Update Class/component design | 1d? | 2016-02-18 | 2016-02-18 | 88 | 0d |
| 90 |  | Complete Class/component design | 0d | 2016-02-18 | 2016-02-18 | 89 | 0d |
| 91 |  | Create progress report 2 | 1d | 2016-02-19 | 2016-02-19 | 85 | 0d |
| 92 |  | Submit progress report 2 | 0d | 2016-02-19 | 2016-02-19 | 91 | 0d |
| 93 | 1.2.7 | **Testing** | 6d? | 2016-02-22 | 2016-02-29 | 92 | 0d |
| 94 |  | Create test plan/case checklists | 1d | 2016-02-22 | 2016-02-22 |  | 0d |
| 95 |  | Create test plan | 3d | 2016-02-23 | 2016-02-25 | 94 | 0d |
| 96 |  | Review test plan | 1d | 2016-02-26 | 2016-02-26 | 95 | 0d |
| 97 |  | Update test plan | 1d? | 2016-02-29 | 2016-02-29 | 96 | 0d |
| 98 |  | Test plan complete | 0d | 2016-02-29 | 2016-02-29 | 97 | 0d |
| 99 |  | Create progress report 3 | 1d? | 2016-03-01 | 2016-03-01 | 93 | 0d |
| 100 |  | Submit progress report 3 | 0d | 2016-03-01 | 2016-03-01 | 99 | 0d |
| 101 | 1.3 | **Construction** | 31d? | 2016-03-02 | 2016-04-13 | 46 | 0d |
| 102 | 1.3.1 | **Define Coding Standards** | 1d? | 2016-03-02 | 2016-03-02 |  | 0d |
| 103 |  | Create Coding Convention | 1d? | 2016-03-02 | 2016-03-02 |  | 8d |
| 104 |  | Create Code & UT Test review checklist | 1d? | 2016-03-02 | 2016-03-02 |  | 0d |
| 105 | 1.3.2 | **Screen Design** | 2d | 2016-03-02 | 2016-03-03 |  | 10d |
| 106 |  | Refine screen design document and prototype | 2d | 2016-03-02 | 2016-03-03 |  | 10d |
| 107 | 1.3.3 | **Coding & Unit test** | 18d | 2016-03-03 | 2016-03-28 |  | 8d |
| 108 |  | Structure core modules & source code common | 3d | 2016-03-03 | 2016-03-07 | 103 | 8d |
| 109 | 1.3.3.2 | **Client User Module** | 10d | 2016-03-08 | 2016-03-21 | 108, 105, 102 | 8d |
| 110 |  | Home Page Module | 3d | 2016-03-08 | 2016-03-10 |  | 10d |
| 111 |  | Login/ Logout Module | 2d | 2016-03-11 | 2016-03-14 | 110 | 10d |
| 112 | 1.3.3.2.3 | **Project module** | 8d | 2016-03-08 | 2016-03-17 |  | 8d |
| 113 |  | Create/manage a project Module | 5d | 2016-03-08 | 2016-03-14 |  | 8d |
| 114 |  | View/Back a project Module | 3d | 2016-03-15 | 2016-03-17 | 113 | 8d |
| 115 |  | User Personal Page Module | 3d | 2016-03-08 | 2016-03-10 |  | 9d |
| 116 |  | Search Module | 2d | 2016-03-18 | 2016-03-21 | 112 | 8d |
| 117 |  | Message Module | 4d | 2016-03-11 | 2016-03-16 | 115 | 9d |
| 118 | 1.3.3.3 | **Admin Module** | 10d | 2016-03-15 | 2016-03-28 | 108, 105, 102 | 8d |
| 119 |  | Login/ Logout module | 2d | 2016-03-15 | 2016-03-16 | 111 | 10d |
| 120 |  | Manage Users Module | 4d | 2016-03-17 | 2016-03-22 | 117 | 9d |
| 121 |  | Manage Projects Module | 5d | 2016-03-22 | 2016-03-28 | 116 | 8d |
| 122 |  | Manage Backings Module | 3d | 2016-03-17 | 2016-03-21 | 119 | 10d |
| 123 |  | Manage Categories Module | 3d | 2016-03-22 | 2016-03-24 | 122 | 10d |
| 124 |  | Mangage Silder Module | 3d | 2016-03-23 | 2016-03-25 | 120 | 9d |
| 125 |  | Complete Coding | 0d | 2016-03-28 | 2016-03-28 | 109, 118 | 8d |
| 126 |  | Create Progress Report 4 | 1d? | 2016-03-29 | 2016-03-29 | 105, 107 | 11d |
| 127 |  | Submit Progress Report 4 | 0d | 2016-03-29 | 2016-03-29 | 126 | 11d |
| 128 | 1.3.6 | **Testing** | 26d? | 2016-03-03 | 2016-04-07 |  | 0d |
| 129 | 1.3.6.1 | **Writing test case (continue)** | 10d? | 2016-03-03 | 2016-03-16 | 104 | 0d |
| 130 | 1.3.6.1.1 | **System test case** | 5d? | 2016-03-03 | 2016-03-09 |  | 0d |
| 131 |  | Create system test case | 3d | 2016-03-03 | 2016-03-07 |  | 0d |
| 132 |  | Review system test case | 1d? | 2016-03-08 | 2016-03-08 | 131 | 0d |
| 133 |  | Update system test case | 1d? | 2016-03-09 | 2016-03-09 | 132 | 0d |
| 134 | 1.3.6.1.2 | **Integration test case** | 5d? | 2016-03-10 | 2016-03-16 | 130 | 0d |
| 135 |  | Create integration test case | 3d | 2016-03-10 | 2016-03-14 |  | 0d |
| 136 |  | Review integration test case | 1d? | 2016-03-15 | 2016-03-15 | 135 | 0d |
| 137 |  | Update integration test case | 1d? | 2016-03-16 | 2016-03-16 | 136 | 0d |
| 138 |  | Writing test case complete | 0d | 2016-03-16 | 2016-03-16 | 134 | 0d |
| 139 | 1.3.6.2 | **Execute Test Round 1** | 8d | 2016-03-17 | 2016-03-28 | 129 | 0d |
| 140 |  | Execute Integration Test | 3d | 2016-03-17 | 2016-03-21 |  | 0d |

| ID | WBS | Task | Duration | Start | Finish | Predecessors | Total float |
| --- | --- | --- | --- | --- | --- | --- | --- |
| 141 |  | Fix bug Integration Test | 2d | 2016-03-22 | 2016-03-23 | 140 | 10d |
| 142 |  | Execute System Test | 3d | 2016-03-22 | 2016-03-24 | 140 | 0d |
| 143 |  | Fix bug System Test | 2d | 2016-03-25 | 2016-03-28 | 142 | 7d |
| 144 |  | Update Test Case | 1d | 2016-03-25 | 2016-03-25 | 142 | 0d |
| 145 | 1.3.6.4 | **Execute Test Round 2** | 8d | 2016-03-28 | 2016-04-06 | 144 | 0d |
| 146 |  | Execute Integration Test | 3d | 2016-03-28 | 2016-03-30 |  | 0d |
| 147 |  | Fix bug Integration Test | 2d | 2016-03-31 | 2016-04-01 | 146 | 3d |
| 148 |  | Execute System Test | 3d | 2016-03-31 | 2016-04-04 | 146 | 0d |
| 149 |  | Fix bug System Test | 2d | 2016-04-05 | 2016-04-06 | 148 | 0d |
| 150 |  | Create Test Report | 1d | 2016-04-07 | 2016-04-07 | 139, 145 | 0d |
| 151 |  | Testing Complete | 0d | 2016-04-07 | 2016-04-07 | 150 | 0d |
| 152 | 1.3.7 | **Quality Control** | 3d | 2016-04-08 | 2016-04-12 | 128, 107 | 0d |
| 153 |  | Create Quality Report | 2d | 2016-04-08 | 2016-04-11 |  | 0d |
| 154 |  | Review Quality Report | 0.5d | 2016-04-12 | 2016-04-12 | 153 | 0d |
| 155 |  | Update Quality Report | 0.5d | 2016-04-12 | 2016-04-12 | 154 | 0d |
| 156 |  | Create Progress Report 5 | 1d? | 2016-04-13 | 2016-04-13 | 152 | 0d |
| 157 |  | Submit Progress Report 5 | 0d | 2016-04-13 | 2016-04-13 | 156 | 0d |
| 158 | 1.4 | **Termination** | 11d | 2016-04-14 | 2016-04-28 | 101 | 0d |
| 159 |  | Create lesson learned | 1d | 2016-04-14 | 2016-04-14 |  | 0d |
| 160 | 1.4.2 | **Final Report Document** | 2d | 2016-04-15 | 2016-04-18 | 159 | 0d |
| 161 |  | Create Final Report document | 2d | 2016-04-15 | 2016-04-18 |  | 0d |
| 162 |  | Create Installing Guide | 2d | 2016-04-15 | 2016-04-18 |  | 0d |
| 163 |  | Create User Guideline | 2d | 2016-04-15 | 2016-04-18 |  | 0d |
| 164 |  | Create Project Result Assessment | 2d | 2016-04-15 | 2016-04-18 |  | 0d |
| 165 |  | Create Slides for Final Presentation | 2d | 2016-04-15 | 2016-04-18 |  | 0d |
| 166 |  | Submit all Final Documents and Source codes | 0d | 2016-04-18 | 2016-04-18 | 160 | 8d |
| 167 | 1.4.4 | **Pre-closing** | 5d | 2016-04-19 | 2016-04-25 |  | 0d |
| 168 |  | Trainning presentation | 5d | 2016-04-19 | 2016-04-25 | 160 | 0d |
| 169 | 1.4.5 | **Closing** | 3d | 2016-04-26 | 2016-04-28 | 168 | 0d |
| 170 |  | Presentation for Capstone Project | 3d | 2016-04-26 | 2016-04-28 |  | 0d |
| 171 |  | Complete Project | 0d | 2016-04-28 | 2016-04-28 | 170 | 0d |

## Version 2 (saved 2016-01-20)

Last finish stays 2016-04-28.

Changed:

| ID | Task | Start | Finish | Duration | Total float | Other |
| --- | --- | --- | --- | --- | --- | --- |
| 9 | **Environment** |  |  | 2d? → 1.62d? | 0d → 0.38d |  |
| 11 | **Install tools & environments** |  |  | 1d → 0.62d | 0d → 0.38d |  |
| 13 | Install NetBin 7.0 |  |  | 3h → 1h | 0d → 0.38d | was named Install Visual Studio 2013 |
| 14 | Install Microsoft SQL Server 2012 |  | 2016-01-14 → 2016-01-13 (-1d) |  | 0d → 0.38d | was named Install Microsoft SQL Server 2010 |
| 15 | Install Microsoft Project 2016 | 2016-01-14 → 2016-01-13 (-1d) |  | 2h → 1h | 0d → 0.38d | was named Install Microsoft Project 2013 |
| 18 | **Technology Research (Part 1)** | 2016-01-15 → 2016-01-14 (-1d) |  |  | 0d → 0.38d |  |
| 19 | Study Java & MVC | 2016-01-15 → 2016-01-14 (-1d) |  |  | 0d → 0.38d |  |
| 20 | Study Jquery & Bootstrap | 2016-01-15 → 2016-01-14 (-1d) |  |  | 0d → 0.38d |  |
| 21 | Study Bootstraps, HTML5 & CSS3 | 2016-01-15 → 2016-01-14 (-1d) |  |  | 2d → 2.38d |  |
| 48 | Type here |  |  |  |  | was named Code first migration |
| 49 | Type here |  |  |  |  | was named Restful API on .net MVC |
| 50 | Type here |  |  |  |  | was named Payment by BaoKim API |
| 51 | Type here |  |  |  |  | was named Facebook Login API |
| 75 | Create resource manager screen design |  |  |  |  | was named Create client screen design |
| 76 | Create hr & admin screen design |  |  |  |  | was named Create admin screen design |
| 109 | **Resource manager Module** |  |  |  |  | was named Client User Module |
| 110 | Type here |  |  |  |  | was named Home Page Module |
| 111 | Type here |  |  |  |  | was named Login/ Logout Module |
| 112 | **HR module** |  |  |  |  | was named Project module |
| 113 | Type here |  |  |  |  | was named Create/manage a project Module |
| 114 | Type here |  |  |  |  | was named View/Back a project Module |
| 115 | Type here |  |  |  |  | was named User Personal Page Module |
| 116 | Type here |  |  |  |  | was named Search Module |
| 117 | Type here |  |  |  |  | was named Message Module |
| 119 | Type here |  |  |  |  | was named Login/ Logout module |
| 120 | Type here |  |  |  |  | was named Manage Users Module |
| 121 | Type here |  |  |  |  | was named Manage Projects Module |
| 122 | Type here |  |  |  |  | was named Manage Backings Module |
| 123 | Type here |  |  |  |  | was named Manage Categories Module |
| 124 | Type here |  |  |  |  | was named Mangage Silder Module |
